# 231400086_AlizaJaved

Schedule from MS Project, 2026-09-01 to 2026-11-17, costs in Rs, A marks actual dates.

## Calendars

- Standard: Mon-Fri 08:00-12:00, 13:00-17:00; Sat-Sun off.

## Resources

| Resource | Group | Rate |
| --- | --- | --- |
| Project Manager | Management | 2000 |
| Business Analyst | Gathering requiremnts and scope formulation | 1200 |
| Lead Developer | Designing & deployment | 1500 |
| Backend Developer | Controller | 1100 |
| Frontend Developer | Layout | 1300 |
| Senior QA Engineer | Test plan & integration | 1400 |
| Security Analyst | Security | 1100 |
| Network Administrator | Server infrastructure | 1000 |
| Technical Writer | Documntataion | 800 |
| Intern Developer | Assisstance | 1600 |
| Production Server Instance | Integration | 1200 |
| Travel Allowance | User acceptance testing |  |
| Software License Fee | Developemnt |  |
| UI/UX Designer |  |  |
| Database Administrator |  |  |
| QA Engineer |  |  |
| Network Admin |  |  |

## Schedule

| ID | WBS | Task | Type | Duration | Start | Finish | Predecessors | Complete | Remaining | Total slack | Free slack | Constraint | Resources | Work | Actual work | Cost | Actual cost |
| --- | --- | --- | --- | --- | --- | --- | --- | --- | --- | --- | --- | --- | --- | --- | --- | --- | --- |
| 1 | 1 | **Phase 1: Project Inception & Setup** |  | 4d | 2026-09-01 A | 2026-09-04 A |  | 100% |  |  |  |  |  | 32h | 32h | 64,000 | 64,000 |
| 2 | 1.1 | Conducted Stakeholder Alignment Briefing |  | 1d | 2026-09-01 A | 2026-09-01 A |  | 100% |  |  |  | finish no earlier than 2026-09-01 | Project Manager | 8h | 8h | 16,000 | 16,000 |
| 3 | 1.2 | Draft Strategic Project Charter Document |  | 2d | 2026-09-02 A | 2026-09-03 A | 2 | 100% |  |  |  | finish no earlier than 2026-09-03 | Project Manager | 16h | 16h | 32,000 | 32,000 |
| 4 | 1.3 | Allocate Core Engineering Work Resources |  | 1d | 2026-09-04 A | 2026-09-04 A | 3 | 100% |  |  |  | finish no earlier than 2026-09-04 | Project Manager | 8h | 8h | 16,000 | 16,000 |
| 5 | 2 | **Phase 2: Needs Discovery & Requirements** |  | 6d | 2026-09-07 A | 2026-09-14 |  | 42% | 3.5d | 0d |  |  |  | 48h | 20h | 57,600 | 24,000 |
| 6 | 2.1 | Run Departmental Discovery Workshops |  | 3d | 2026-09-07 A | 2026-09-09 | 4 | 50% | 1.5d | 1d | 0d | finish no earlier than 2026-09-09 | Business Analyst | 24h | 12h | 28,800 | 14,400 |
| 7 | 2.2 | Compile Technical SRS Specification |  | 2d | 2026-09-10 A | 2026-09-11 | 6 | 50% | 1d | 0d |  | finish no earlier than 2026-09-11 | Business Analyst | 16h | 8h | 19,200 | 9,600 |
| 8 | 2.3 | Acquire Official Client Requirements Sign-Off |  | 1d | 2026-09-14 | 2026-09-14 | 7 |  |  | 0d |  | finish no earlier than 2026-09-14 | Business Analyst | 8h |  | 9,600 |  |
| 9 | 3 | ◆ Milestone: Requirements Engineering Cleared | milestone | 0d | 2026-09-14 A | 2026-09-14 | 8 | 25% | 0d | 0d |  | finish no earlier than 2026-09-14 |  |  |  |  |  |
| 10 | 4 | **Phase 3: Structural System Analysis** |  | 6d | 2026-09-15 | 2026-09-22 |  |  |  | 0d |  |  |  | 48h |  | 72,000 |  |
| 11 | 4.1 | Evaluate Legacy Operational Workflows |  | 2d | 2026-09-15 | 2026-09-16 | 9 |  |  | 0d |  | finish no earlier than 2026-09-16 | Lead Developer | 16h |  | 24,000 |  |
| 12 | 4.2 | Model Data Flows & Process Layouts |  | 3d | 2026-09-17 | 2026-09-21 | 11 |  |  | 0d |  | finish no earlier than 2026-09-21 | Lead Developer | 24h |  | 36,000 |  |
| 13 | 4.3 | Review Internal Technical Analysis |  | 1d | 2026-09-22 | 2026-09-22 | 12 |  |  | 0d |  | finish no earlier than 2026-09-22 | Lead Developer | 8h |  | 12,000 |  |
| 14 | 5 | **Phase 4: Interface & User Experience Design** |  | 5d | 2026-09-23 | 2026-09-29 |  |  |  | 0d |  |  |  | 48h |  |  |  |
| 15 | 5.1 | Develop Structural System Wireframes |  | 3d | 2026-09-23 | 2026-09-25 | 13 |  |  | 0d |  | finish no earlier than 2026-09-17 | UI/UX Designer | 24h |  |  |  |
| 16 | 5.2 | Build Dynamic Clickable Prototypes |  | 2d | 2026-09-25 | 2026-09-28 | 15FS-1d |  |  | 0d |  | finish no earlier than 2026-09-21 | UI/UX Designer | 16h |  |  |  |
| 17 | 5.3 | Acquire UI/UX Design Verification |  | 1d | 2026-09-29 | 2026-09-29 | 16 |  |  | 0d |  | finish no earlier than 2026-09-22 | UI/UX Designer | 8h |  |  |  |
| 18 | 6 | ◆ Milestone: Design Architecture Finalized | milestone | 0d | 2026-09-29 | 2026-09-29 | 17 |  |  | 0d |  | finish no earlier than 2026-09-22 |  |  |  |  |  |
| 19 | 7 | **Phase 5: Database Architecture Engineering** |  | 5d | 2026-09-30 | 2026-10-06 |  |  |  | 0d |  |  |  | 40h |  |  |  |
| 20 | 7.1 | Map Logical Schema & Entities |  | 2d | 2026-09-30 | 2026-10-01 | 18 |  |  | 0d |  | finish no earlier than 2026-09-16 | Database Administrator | 16h |  |  |  |
| 21 | 7.2 | Execute 3NF Relational Normalization |  | 2d | 2026-10-02 | 2026-10-05 | 20 |  |  | 0d |  | finish no earlier than 2026-09-18 | Database Administrator | 16h |  |  |  |
| 22 | 7.3 | Audit Schema Integrity & Security Review |  | 1d | 2026-10-06 | 2026-10-06 | 21 |  |  | 0d |  | finish no earlier than 2026-09-21 | Database Administrator | 8h |  |  |  |
| 23 | 8 | **Phase 6: Application Code Development** |  | 12.5d | 2026-10-07 | 2026-10-23 |  |  |  | 0d |  |  | Software License Fee [0.1%] | 200h |  | 240,000 |  |
| 24 | 8.1 | Program Backend API & Core Integration Layer |  | 8d | 2026-10-07 | 2026-10-16 | 22 |  |  | 0d |  | finish no earlier than 2026-10-02 | Backend Developer; Frontend Developer | 128h |  | 153,600 |  |
| 25 | 8.2 | Build Client-Facing Frontend Portals |  | 2.5d | 2026-10-19 | 2026-10-21 | 24 |  |  | 0d |  | finish no earlier than 2026-09-29 | Frontend Developer; Backend Developer | 40h |  | 48,000 |  |
| 26 | 8.3 | Assemble Component Modules & Code Freeze |  | 2d | 2026-10-21 | 2026-10-23 | 25 |  |  | 0d |  | finish no earlier than 2026-10-06 | Backend Developer; Frontend Developer | 32h |  | 38,400 |  |

| ID | WBS | Task | Type | Duration | Start | Finish | Predecessors | Total slack | Constraint | Resources | Work | Cost |
| --- | --- | --- | --- | --- | --- | --- | --- | --- | --- | --- | --- | --- |
| 27 | 9 | **Phase 7: Comprehensive Quality Verification** |  | 8d | 2026-10-23 | 2026-11-04 |  | 0d |  |  | 64h |  |
| 28 | 9.1 | Execute Code Unit Testing Scripts |  | 2d | 2026-10-23 | 2026-10-27 | 26 | 0d | finish no earlier than 2026-10-14 | QA Engineer | 16h |  |
| 29 | 9.2 | Run System Integration Testing Sprints |  | 3d | 2026-10-27 | 2026-10-30 | 28 | 0d | finish no earlier than 2026-10-19 | QA Engineer | 24h |  |
| 30 | 9.3 | Coordinate User Acceptance Testing Sessions |  | 3d | 2026-10-30 | 2026-11-04 | 29 | 0d | finish no earlier than 2026-10-22 | QA Engineer; Travel Allowance [0.1%] | 24h |  |
| 31 | 10 | ◆ Milestone: Quality Sign-Off Approved | milestone | 0d | 2026-11-04 | 2026-11-04 | 30 | 0d | finish no earlier than 2026-10-22 |  |  |  |
| 32 | 11 | **Phase 8: Production Deployment Sprints** |  | 4d | 2026-11-04 | 2026-11-10 |  | 0d |  |  | 64h | 57,600 |
| 33 | 11.1 | Configure Staging Server Runtime Environments |  | 2d | 2026-11-04 | 2026-11-06 | 31 | 0d | finish no earlier than 2026-10-27 | Lead Developer; Network Administrator | 32h | 40,000 |
| 34 | 11.2 | Execute Live Production Database Migration |  | 2d | 2026-11-06 | 2026-11-10 | 33 | 0d | finish no earlier than 2026-10-29 | Security Analyst; Network Admin | 32h | 17,600 |
| 35 | 12 | ◆ Milestone: UEMS Portal Live in Production | milestone | 0d | 2026-11-12 | 2026-11-12 | 34FS+2d | 0d | finish no earlier than 2026-10-29 |  |  |  |
| 36 | 13 | **Phase 9: Administrative Project Closeout** |  | 3d | 2026-11-12 | 2026-11-17 |  | 0d |  |  | 36h | 48,000 |
| 37 | 13.1 | Conduct Academic Staff Operations Training |  | 2d | 2026-11-12 | 2026-11-16 | 35 | 0d | finish no earlier than 2026-11-02 | Technical Writer [50%]; Intern Developer | 24h | 32,000 |
| 38 | 13.2 | Deliver Final Handover Records & Closeout Archive |  | 1d | 2026-11-16 | 2026-11-17 | 37 | 0d | finish no earlier than 2026-11-02 | Technical Writer [50%]; Intern Developer | 12h | 16,000 |
